# Celeris Edge — Plan de gestión del proyecto

How a schedule from MS Project XML changed from version to version. A marks actual dates.

## Version 1 (data date 2026-11-25, saved 2026-11-26, file Cronograma_Celeris.xml)

Note of the change: CE01 P3: E3 Plan de Gestión del Proyecto; CI-103

| ID | WBS | Task | Duration | Start | Finish | Predecessors | Complete | Constraint |
| --- | --- | --- | --- | --- | --- | --- | --- | --- |
| 1 | H | **Hitos del proyecto** |  | 2026-11-18 | 2027-06-18 |  |  |  |
| 2 |  | H0 Inicio del proyecto | 0d | 2026-11-18 A | 2026-11-18 A |  | 100% |  |
| 3 |  | H1 Sustentación de S1 | 0d | 2026-12-18 | 2026-12-18 | 74 |  |  |
| 4 |  | HS2 Inicio de S2 | 0d | 2027-03-01 | 2027-03-01 | 3 |  | start no earlier than 2027-03-01 |
| 5 |  | H2 Aprobación de la DTI para el piloto | 0d | 2027-03-05 | 2027-03-05 | 66 |  |  |
| 6 |  | H3 Decisión de ampliación | 0d | 2027-05-28 | 2027-05-28 | 69 |  |  |
| 7 |  | H4 Sustentación final y cierre | 0d | 2027-06-18 | 2027-06-18 | 75 |  |  |
| 8 | 1 | **1 Gestión del proyecto** |  | 2026-11-26 | 2027-06-17 |  |  |  |
| 9 | 1.1 | **1.1 Acta** |  | 2026-12-02 | 2026-12-03 |  |  |  |
| 10 |  | 1.1.1 Revisión y firma del acta de constitución | 2d | 2026-12-02 | 2026-12-03 | 27 |  |  |
| 11 | 1.2 | **1.2 Plan** |  | 2026-12-04 | 2026-12-04 |  |  |  |
| 12 |  | 1.2.1 Aprobación del plan y registro de la línea base | 1d | 2026-12-04 | 2026-12-04 | 10 |  |  |
| 13 | 1.3 | **1.3 Seguimiento** |  | 2026-11-26 | 2027-06-17 |  |  |  |
| 14 |  | 1.3.1 Seguimiento semanal de S1 | 15d | 2026-11-26 | 2026-12-17 | 2 |  | start no earlier than 2026-11-26 |
| 15 |  | 1.3.2 Seguimiento semanal de S2 | 77d | 2027-03-01 | 2027-06-17 | 4 |  |  |
| 16 | 1.4 | **1.4 Lecciones aprendidas** |  | 2027-06-14 | 2027-06-15 |  |  |  |
| 17 |  | 1.4.1 Lecciones aprendidas y cierre administrativo | 2d | 2027-06-14 | 2027-06-15 | 71 |  |  |
| 18 | 2 | **2 Gestión de TI** |  | 2026-11-25 | 2026-12-10 |  |  |  |
| 19 | 2.1 | **2.1 Diagnóstico** |  | 2026-11-25 | 2026-12-04 |  |  |  |
| 20 |  | 2.1.1 Diagnóstico organizacional e informe E1 | 1d | 2026-11-25 A | 2026-11-25 A | 2 | 100% |  |
| 21 |  | 2.1.2 Levantamiento con la DTI y los encargados | 5d | 2026-11-26 | 2026-12-02 | 20 |  |  |
| 22 |  | 2.1.3 Actualización del E1 con los datos levantados | 2d | 2026-12-03 | 2026-12-04 | 21 |  |  |
| 23 | 2.2 | **2.2 Business case** |  | 2026-11-25 | 2026-12-04 |  |  |  |
| 24 |  | 2.2.1 Business case e informe E2 | 1d | 2026-11-25 A | 2026-11-25 A | 20 | 100% |  |
| 25 |  | 2.2.2 Actualización del E2 con la cotización del ISP | 2d | 2026-12-03 | 2026-12-04 | 21, 24 |  |  |
| 26 | 2.3 | **2.3 Plan de gestión** |  | 2026-11-26 | 2026-12-01 |  |  |  |
| 27 |  | 2.3.1 Plan de gestión e informe E3 | 4d | 2026-11-26 | 2026-12-01 | 24 |  |  |
| 28 | 2.4 | **2.4 AS-IS / TO-BE** |  | 2026-11-26 | 2026-12-10 |  |  |  |
| 29 |  | 2.4.1 Modelado AS-IS / TO-BE e informe E4 | 5d | 2026-11-26 | 2026-12-02 | 20 |  |  |
| 30 |  | 2.4.2 Cronometraje de un ciclo real (≥ 30 observaciones) | 3d | 2026-12-03 | 2026-12-07 | 21 |  |  |
| 31 |  | 2.4.3 Actualización del E4 con las mediciones | 2d | 2026-12-09 | 2026-12-10 | 29, 30 |  |  |
| 32 | 3 | **3 Ingeniería de software** |  | 2026-11-19 | 2026-12-07 |  |  |  |
| 33 | 3.1 | **3.1 SRS** |  | 2026-11-19 | 2026-11-24 |  |  |  |
| 34 |  | 3.1.1 SRS v0.4 (REQ-F, REQ-NF y casos de uso) | 4d | 2026-11-19 A | 2026-11-24 A | 2 | 100% |  |
| 35 | 3.2 | **3.2 Prototipo de la consola validado** |  | 2026-11-19 | 2026-12-07 |  |  |  |
| 36 |  | 3.2.1 Prototipo navegable de la consola | 4d | 2026-11-19 A | 2026-11-24 A | 34SS+1d | 100% |  |
| 37 |  | 3.2.2 Validación del prototipo con encargados (SUS) | 3d | 2026-12-03 | 2026-12-07 | 36, 21 |  |  |
| 38 | 3.3 | **3.3 C4 + ADR** |  | 2026-11-24 | 2026-11-24 |  |  |  |
| 39 |  | 3.3.1 Modelo C4 y ADR | 1d | 2026-11-24 A | 2026-11-24 A | 34 | 100% |  |
| 40 | 3.4 | **3.4 UML** |  | 2026-11-19 | 2026-11-24 |  |  |  |
| 41 |  | 3.4.1 Diagramas UML por caso de uso | 4d | 2026-11-19 A | 2026-11-24 A | 34SS+1d | 100% |  |
| 42 | 3.5 | **3.5 Trazabilidad** |  | 2026-11-24 | 2026-11-24 |  |  |  |
| 43 |  | 3.5.1 Matriz de trazabilidad | 1d | 2026-11-24 A | 2026-11-24 A | 39, 41 | 100% |  |
| 44 | 4 | **4 Infraestructura** |  | 2026-11-18 | 2026-11-24 |  |  |  |
| 45 | 4.1 | **4.1 Diseño de red** |  | 2026-11-18 | 2026-11-24 |  |  |  |
| 46 |  | 4.1.1 Diseño de red e informe CE0311 | 5d | 2026-11-18 A | 2026-11-24 A | 50SS+2d | 100% |  |
| 47 | 4.2 | **4.2 Diseño de centro de datos** |  | 2026-11-23 | 2026-11-24 |  |  |  |
| 48 |  | 4.2.1 Diseño del centro de datos e informe CE0331 | 2d | 2026-11-23 A | 2026-11-24 A | 46SS+5d | 100% |  |
| 49 | 4.3 | **4.3 Inventario único de red** |  | 2026-11-18 | 2026-11-22 |  |  |  |
| 50 |  | 4.3.1 Inventario único de red v0.4 | 3d | 2026-11-18 A | 2026-11-20 A | 2 | 100% |  |
| 51 | 5 | **5 Prueba de concepto** |  | 2026-11-18 | 2027-06-11 |  |  |  |
| 52 | 5.1 | **5.1 Nodo de caché + PAC** |  | 2026-11-18 | 2027-03-30 |  |  |  |
| 53 |  | 5.1.1 Nodo de caché, PAC y configuración firmada | 3d | 2026-11-18 A | 2026-11-20 A | 2 | 100% |  |
| 54 |  | 5.1.2 Adquisición e instalación del hardware del rack | 15d | 2027-03-08 | 2027-03-30 | 5 |  |  |
| 55 | 5.2 | **5.2 Laboratorio emulado** |  | 2026-11-18 | 2026-11-30 |  |  |  |
| 56 |  | 5.2.1 Laboratorio emulado (Modo L) y ensayo v0.4 | 4d | 2026-11-18 A | 2026-11-23 A | 50 | 100% |  |
| 57 |  | 5.2.2 Cierre de la prueba crítica pendiente T58 | 3d | 2026-11-26 | 2026-11-30 | 56 |  | start no earlier than 2026-11-26 |
| 58 | 5.3 | **5.3 IaC AWS** |  | 2026-11-19 | 2026-11-23 |  |  |  |
| 59 |  | 5.3.1 IaC de AWS contra el emulador | 3d | 2026-11-19 A | 2026-11-23 A | 50 | 100% |  |
| 60 | 5.4 | **5.4 Consola del encargado** |  | 2027-03-01 | 2027-04-20 |  |  |  |
| 61 |  | 5.4.1 Sprints 1–2: autenticación, auditoría y catálogo | 10d | 2027-03-01 | 2027-03-12 | 4 |  |  |
| 62 |  | 5.4.2 Sprints 3–4: laboratorios, configuración firmada y precargas | 10d | 2027-03-15 | 2027-03-30 | 61 |  |  |
| 63 |  | 5.4.3 Sprints 5–6: ahorro, portal y solicitudes | 10d | 2027-03-31 | 2027-04-13 | 62 |  |  |
| 64 |  | 5.4.4 Pruebas de aceptación de la consola con encargados | 5d | 2027-04-14 | 2027-04-20 | 63 |  |  |
| 65 | 5.5 | **5.5 Piloto en un laboratorio** |  | 2027-03-01 | 2027-05-28 |  |  |  |
| 66 |  | 5.5.1 Aprobación de la DTI y pedidos del FortiGate (S-29) | 5d | 2027-03-01 | 2027-03-05 | 4 |  |  |
| 67 |  | 5.5.2 Despliegue en el laboratorio piloto y simulacro T59 | 5d | 2027-04-21 | 2027-04-27 | 64, 54 |  |  |
| 68 |  | 5.5.3 Operación y medición del piloto (BHR, tiempos, SUS) | 20d | 2027-04-28 | 2027-05-25 | 67 |  |  |
| 69 |  | 5.5.4 Informe del piloto y recomendación | 3d | 2027-05-26 | 2027-05-28 | 68 |  |  |
| 70 | 5.6 | **5.6 Ampliación a los laboratorios** |  | 2027-05-31 | 2027-06-11 |  |  |  |

| ID | WBS | Task | Duration | Start | Finish | Predecessors |
| --- | --- | --- | --- | --- | --- | --- |
| 71 |  | 5.6.1 Ampliación a los 10 laboratorios | 10d | 2027-05-31 | 2027-06-11 | 6 |
| 72 | 6 | **6 Cierre y sustentación** |  | 2026-12-01 | 2027-06-18 |  |
| 73 | 6.1 | **6.1 Ensayos** |  | 2026-12-16 | 2027-06-18 |  |
| 74 |  | 6.1.1 Ensayos de la sustentación de S1 | 3d | 2026-12-16 | 2026-12-18 | 80, 77 |
| 75 |  | 6.1.2 Ensayos de la sustentación final | 2d | 2027-06-17 | 2027-06-18 | 81, 78, 17 |
| 76 | 6.2 | **6.2 Demo grabada** |  | 2026-12-01 | 2027-06-01 |  |
| 77 |  | 6.2.1 Demo grabada del laboratorio emulado | 2d | 2026-12-01 | 2026-12-02 | 57 |
| 78 |  | 6.2.2 Demo grabada del piloto | 2d | 2027-05-31 | 2027-06-01 | 69 |
| 79 | 6.3 | **6.3 Expediente PDF** |  | 2026-12-11 | 2027-06-16 |  |
| 80 |  | 6.3.1 Expediente consolidado de S1 | 3d | 2026-12-11 | 2026-12-15 | 12, 22, 25, 31, 37, 43, 48, 57, 59 |
| 81 |  | 6.3.2 Expediente final del proyecto | 3d | 2027-06-14 | 2027-06-16 | 71 |

## Version 2 (data date 2026-11-25, saved 2026-11-26, file Cronograma_Celeris.mpp)

Note of the change: CE01 P3: E3 Plan de Gestión del Proyecto; CI-103

Last finish stays 2027-06-18.

Changed:

| ID | Task | Start | Finish | Duration | Complete | Total float | Other |
| --- | --- | --- | --- | --- | --- | --- | --- |
| 1 | **Hitos del proyecto** | 2026-11-18 A |  | none → 100d |  | none → 0d |  |
| 8 | **1 Gestión del proyecto** |  |  | none → 93d |  | none → 1d |  |
| 9 | **1.1 Acta** |  |  | none → 2d |  | none → 3d |  |
| 10 | 1.1.1 Revisión y firma del acta de constitución |  |  |  |  | none → 3d | resources Henyelrey Lucio Garcia Chura (director del proyecto) [12.5%]; Docente del curso (revisión) [6.25%] → Henyelrey Lucio Garcia Chura (director del proyecto) [12.5%]; Docente del curso (revisión) [6.2%] |
| 11 | **1.2 Plan** |  |  | none → 1d |  | none → 3d |  |
| 13 | **1.3 Seguimiento** |  |  | none → 93d |  | none → 1d |  |
| 16 | **1.4 Lecciones aprendidas** |  |  | none → 2d |  | none → 1d |  |
| 17 | 1.4.1 Lecciones aprendidas y cierre administrativo |  |  |  |  | none → 1d | resources Henyelrey Lucio Garcia Chura (director del proyecto) [18.75%]; Nick Saim Mayta Jara (líder técnico) [18.75%] → Henyelrey Lucio Garcia Chura (director del proyecto) [18.8%]; Nick Saim Mayta Jara (líder técnico) [18.8%] |
| 18 | **2 Gestión de TI** | 2026-11-25 A |  | none → 11d | 0% → 8% | none → 0d |  |
| 19 | **2.1 Diagnóstico** | 2026-11-25 A |  | none → 8d | 0% → 13% | none → 3d |  |
| 23 | **2.2 Business case** | 2026-11-25 A |  | none → 8d | 0% → 33% | none → 3d |  |
| 26 | **2.3 Plan de gestión** |  |  | none → 4d |  | none → 3d |  |
| 28 | **2.4 AS-IS / TO-BE** |  |  | none → 10d |  | none → 0d |  |
| 30 | 2.4.2 Cronometraje de un ciclo real (≥ 30 observaciones) |  |  |  |  | none → 0d | resources Henyelrey Lucio Garcia Chura (director del proyecto) [25%]; Encargados de laboratorio [16.67%] → Henyelrey Lucio Garcia Chura (director del proyecto) [25%]; Encargados de laboratorio [16.7%] |
| 32 | **3 Ingeniería de software** | 2026-11-19 A |  | none → 13d | 0% → 82% | none → 2d |  |
| 33 | **3.1 SRS** | 2026-11-19 A | 2026-11-24 A | none → 4d | 0% → 100% |  |  |
| 35 | **3.2 Prototipo de la consola validado** | 2026-11-19 A |  | none → 13d | 0% → 57% | none → 2d |  |
| 37 | 3.2.2 Validación del prototipo con encargados (SUS) |  |  |  |  | none → 2d | resources Nick Saim Mayta Jara (líder técnico) [25%]; Encargados de laboratorio [16.67%] → Nick Saim Mayta Jara (líder técnico) [25%]; Encargados de laboratorio [16.7%] |
| 38 | **3.3 C4 + ADR** | 2026-11-24 A | 2026-11-24 A | none → 1d | 0% → 100% |  |  |
| 40 | **3.4 UML** | 2026-11-19 A | 2026-11-24 A | none → 4d | 0% → 100% |  |  |
| 42 | **3.5 Trazabilidad** | 2026-11-24 A | 2026-11-24 A | none → 1d | 0% → 100% |  |  |
| 44 | **4 Infraestructura** | 2026-11-18 A | 2026-11-24 A | none → 5d | 0% → 100% |  |  |
| 45 | **4.1 Diseño de red** | 2026-11-18 A | 2026-11-24 A | none → 5d | 0% → 100% |  |  |
| 47 | **4.2 Diseño de centro de datos** | 2026-11-23 A | 2026-11-24 A | none → 2d | 0% → 100% |  |  |
| 49 | **4.3 Inventario único de red** | 2026-11-18 A | 2026-11-22 → 2026-11-20 A (-2d) | none → 3d | 0% → 100% |  |  |
| 51 | **5 Prueba de concepto** | 2026-11-18 A |  | none → 95d | 0% → 9% | none → 0d |  |
| 52 | **5.1 Nodo de caché + PAC** | 2026-11-18 A |  | none → 42d | 0% → 17% | none → 15d |  |
| 54 | 5.1.2 Adquisición e instalación del hardware del rack |  |  |  |  | none → 15d | resources Nick Saim Mayta Jara (líder técnico) [6.67%]; Henyelrey Lucio Garcia Chura (director del proyecto) [3.33%]; DTI (administradores de infraestructura) [5%] → Nick Saim Mayta Jara (líder técnico) [6.7%]; Henyelrey Lucio Garcia Chura (director del proyecto) [3.3%]; DTI (administradores de infraestructura) [5%] |
| 55 | **5.2 Laboratorio emulado** | 2026-11-18 A |  | none → 9d | 0% → 57% | none → 7d |  |
| 57 | 5.2.2 Cierre de la prueba crítica pendiente T58 |  |  |  |  | none → 7d | resources Nick Saim Mayta Jara (líder técnico) [16.67%] → Nick Saim Mayta Jara (líder técnico) [16.7%] |
| 58 | **5.3 IaC AWS** | 2026-11-19 A | 2026-11-23 A | none → 3d | 0% → 100% |  |  |
| 60 | **5.4 Consola del encargado** |  |  | none → 35d |  | none → 0d |  |
| 65 | **5.5 Piloto en un laboratorio** |  |  | none → 63d |  | none → 0d |  |
| 68 | 5.5.3 Operación y medición del piloto (BHR, tiempos, SUS) |  |  |  |  | none → 0d | resources Nick Saim Mayta Jara (líder técnico) [6.25%]; Henyelrey Lucio Garcia Chura (director del proyecto) [6.25%]; Encargados de laboratorio [3.75%] → Nick Saim Mayta Jara (líder técnico) [6.2%]; Henyelrey Lucio Garcia Chura (director del proyecto) [6.2%]; Encargados de laboratorio [3.8%] |
| 69 | 5.5.4 Informe del piloto y recomendación |  |  |  |  | none → 0d | resources Henyelrey Lucio Garcia Chura (director del proyecto) [33.33%]; Nick Saim Mayta Jara (líder técnico) [16.67%] → Henyelrey Lucio Garcia Chura (director del proyecto) [33.3%]; Nick Saim Mayta Jara (líder técnico) [16.7%] |
| 70 | **5.6 Ampliación a los laboratorios** |  |  | none → 10d |  | none → 0d |  |
| 71 | 5.6.1 Ampliación a los 10 laboratorios |  |  |  |  | none → 0d | resources Nick Saim Mayta Jara (líder técnico) [20%]; Henyelrey Lucio Garcia Chura (director del proyecto) [20%]; DTI (administradores de infraestructura) [7.5%]; Encargados de laboratorio [6.25%] → Nick Saim Mayta Jara (líder técnico) [20%]; Henyelrey Lucio Garcia Chura (director del proyecto) [20%]; DTI (administradores de infraestructura) [7.5%]; Encargados de laboratorio [6.2%] |
| 72 | **6 Cierre y sustentación** |  |  | none → 91d |  | none → 0d |  |
| 73 | **6.1 Ensayos** |  |  | none → 81d |  | none → 0d |  |
| 74 | 6.1.1 Ensayos de la sustentación de S1 |  |  |  |  | none → 0d | resources Henyelrey Lucio Garcia Chura (director del proyecto) [16.67%]; Nick Saim Mayta Jara (líder técnico) [16.67%] → Henyelrey Lucio Garcia Chura (director del proyecto) [16.7%]; Nick Saim Mayta Jara (líder técnico) [16.7%] |
| 76 | **6.2 Demo grabada** |  |  | none → 78d |  | none → 8d |  |
| 79 | **6.3 Expediente PDF** |  |  | none → 82d |  | none → 0d |  |
| 80 | 6.3.1 Expediente consolidado de S1 |  |  |  |  | none → 0d | resources Henyelrey Lucio Garcia Chura (director del proyecto) [33.33%]; Nick Saim Mayta Jara (líder técnico) [33.33%] → Henyelrey Lucio Garcia Chura (director del proyecto) [33.3%]; Nick Saim Mayta Jara (líder técnico) [33.3%] |
| 81 | 6.3.2 Expediente final del proyecto |  |  |  |  | none → 0d | resources Henyelrey Lucio Garcia Chura (director del proyecto) [33.33%]; Nick Saim Mayta Jara (líder técnico) [33.33%] → Henyelrey Lucio Garcia Chura (director del proyecto) [33.3%]; Nick Saim Mayta Jara (líder técnico) [33.3%] |
